# PROYECTO 3 APRENDIZ DE PRECIOS

Schedule from MS Project, 2018-09-24 to 2019-09-19, costs in $.

## Calendars

- Standard: Mon-Fri 08:00-12:00, 13:00-17:00; Sat-Sun off.

## Resources

| Resource | Rate |
| --- | --- |
| Profesional Analítica | 27343.8 |
| Profesional Desarrollador | 27343.8 |
| Aprendiz | 4955.03 |
| Gestor de proyecto | 46875 |

## Schedule

| ID | WBS | Task | Duration | Start | Finish | Predecessors | Total slack | Free slack | Resources | Work | Cost |
| --- | --- | --- | --- | --- | --- | --- | --- | --- | --- | --- | --- |
| 1 | 1 | **FASE 1 - CONSOLIDACIÓN DE INFORMACIÓN Y ANÁLISIS DE PRECIOS** | 180.88d? | 2018-09-24 | 2019-06-03 |  | 4.62d |  |  | 2102h | 50,963,170.4 |
| 2 | 1.1 | **CONCEPCIÓN** | 7.12d? | 2018-09-24 | 2018-10-03 |  | 0.12d | 0d |  | 32h | 1,500,000 |
| 3 | 1.1.1 | REALIZAR DIAGNÓSTICO DE INFORMACIÓN DISPONIBLE | 1d? | 2018-09-24 | 2018-09-24 |  | 4.5d | 4.38d | Gestor de proyecto [50%] | 4h | 187,500 |
| 4 | 1.1.2 | DEFINIR OBJETIVOS Y ALCANCE | 1d | 2018-09-24 | 2018-09-24 |  | 4.5d | 4.38d | Gestor de proyecto [50%] | 4h | 187,500 |
| 5 | 1.1.3 | DEFINIR EQUIPO DE TRABAJO | 1d | 2018-09-24 | 2018-09-24 |  | 4.5d | 4.38d | Gestor de proyecto [50%] | 4h | 187,500 |
| 6 | 1.1.4 | REALIZAR CRONOGRAMA DE TRABAJO Y RECURSOS NECESARIOS | 1d | 2018-09-24 | 2018-09-24 |  | 4.5d | 4.38d | Gestor de proyecto [50%] | 4h | 187,500 |
| 7 | 1.1.5 | REALIZAR PRESENTACIÓN DE INICIO | 2d | 2018-10-01 | 2018-10-03 | 8, 9, 6, 5, 4, 3 | 0.12d |  | Gestor de proyecto [50%] | 8h | 375,000 |
| 8 | 1.1.6 | REALIZAR REUNIÓN DE INICIO | 1d | 2018-09-28 | 2018-10-01 |  | 0.12d | 0d | Gestor de proyecto [50%] | 4h | 187,500 |
| 9 | 1.1.7 | DEFINIR ARQUITECTURA PARA ANÁLISIS DE PRECIOS | 1d? | 2018-09-24 | 2018-09-24 |  | 4.5d | 4.38d | Gestor de proyecto [50%] | 4h | 187,500 |
| 10 | 1.2 | **RECOLECCIÓN DE INFORMACIÓN** | 24.12d? | 2018-10-03 | 2018-11-06 | 2 | 0.12d |  |  | 300h | 7,942,121.92 |
| 11 | 1.2.1 | REALIZAR INVENTARIO DE FUENTES EXÓGENAS DE INFORMACIÓN PARA ANÁLISIS DE PRECIOS | 1.5d | 2018-10-03 | 2018-10-05 | 9 | 0d |  | Gestor de proyecto [50%]; Profesional Analítica | 10h | 312,500 |
| 12 | 1.2.2 | REALIZAR INGENIERÍA A LA INVERSA A LA BASE DE DATOS DEL SOFTWARE DE PRESUPUESTOS DE PAYC | 6d | 2018-10-05 | 2018-10-15 | 11 | 0d |  | Gestor de proyecto [50%]; Profesional Desarrollador; Profesional Analítica | 80h | 2,500,000 |
| 13 | 1.2.3 | REALIZAR INGENIERÍA A LA INVERSA A LA BASE DE DATOS DE CONTROL DE PRESUPUESTOS DE PAYC | 6d | 2018-10-15 | 2018-10-22 | 12 | 0.12d | 0d | Gestor de proyecto [50%]; Profesional Desarrollador; Profesional Analítica | 80h | 2,500,000 |
| 14 | 1.2.4 | RECOLECTAR BASES DE DATOS DEL SOFTWARE DE CONTROL DE PROYECTOS PARA TODOS LOS PROYECTOS DESDE LA PUESTA EN MARCHA DEL SOFTWARE | 2.12d | 2018-10-22 | 2018-10-24 | 13 | 0.12d | 0d | Gestor de proyecto [50%]; Profesional Analítica; Aprendiz | 25h | 423,030.48 |
| 15 | 1.2.5 | RECOLECTAR INFORMACIÓN DE PRESUPUESTOS EN EXCEL DESDE 2010 | 2.12d? | 2018-10-24 | 2018-10-26 | 14 | 0.12d | 0d | Aprendiz; Gestor de proyecto [50%]; Profesional Analítica | 25h | 423,030.48 |
| 16 | 1.2.6 | RECOLECTAR INFORMACIÓN DE LISTAS DE PRECIOS DESDE 2010 | 2.12d? | 2018-10-26 | 2018-10-30 | 15 | 0.12d | 0d | Aprendiz; Gestor de proyecto [50%]; Profesional Analítica | 25h | 423,030.48 |
| 17 | 1.2.7 | RECOLECTAR INFORMACIÓN DE PRECIOS OBRAS | 2.12d? | 2018-10-30 | 2018-11-01 | 16 | 0.12d | 0d | Aprendiz; Gestor de proyecto [50%]; Profesional Analítica | 25h | 423,030.48 |
| 18 | 1.2.8 | **RECOLECTAR INFORMACIÓN DE FUENTES EXÓGENAS** | 2.62d | 2018-11-01 | 2018-11-06 | 14 | 0.12d |  |  | 30h | 937,500 |
| 19 | 1.2.8.1 | DISEÑAR INSTRUMENTOS DE RECOLECCIÓN (CARTAS SOLICITUD INFORMACIÓN, ARCHIVOS EXCEL CON INFORMACIÓN SOLICITADA, FORMULARIOS EN LÍNEA, ETC) | 2d | 2018-11-01 | 2018-11-05 | 17 | 0.12d | 0d | Profesional Analítica; Gestor de proyecto [50%]; Profesional Desarrollador | 20h | 625,000 |
| 20 | 1.2.8.2 | RECOGER INFORMACIÓN VARIABLES EXÓGENAS | 0.5d | 2018-11-05 | 2018-11-05 | 19 | 0.12d | 0d | Profesional Analítica; Gestor de proyecto [50%]; Profesional Desarrollador | 5h | 156,250 |
| 21 | 1.2.8.3 | REALIZAR SEGUIMIENTO A LAS PETICIONES DE INFORMACIÓN | 0.5d | 2018-11-05 | 2018-11-06 | 20 | 0.12d | 0d | Profesional Analítica; Gestor de proyecto [50%]; Profesional Desarrollador | 5h | 156,250 |
| 22 | 1.3 | **CONSOLIDACIÓN Y DEPURACIÓN DE LA INFORMACIÓN** | 91.12d? | 2018-11-06 | 2019-03-13 | 21 | 0.12d |  |  | 1195h | 23,552,298.48 |
| 23 | 1.3.1 | **DISEÑAR E IMPLEMENTAR BASE DE DATOS PARA CONSOLIDACIÓN INFORMACIÓN** | 5.38d | 2018-11-06 | 2018-11-13 | 21 | 0.12d |  |  | 60h | 1,875,000 |
| 24 | 1.3.1.1 | REALIZAR DIAGRAMA ENTIDAD RELACIÓN | 2d | 2018-11-06 | 2018-11-07 | 21 | 0.12d | 0d | Profesional Analítica; Gestor de proyecto [50%] | 20h | 625,000 |
| 25 | 1.3.1.2 | REALIZAR DICCIONARIO DE DATOS | 2d | 2018-11-08 | 2018-11-09 | 24 | 0.12d | 0d | Profesional Analítica; Gestor de proyecto [50%] | 20h | 625,000 |
| 26 | 1.3.1.3 | IMPLEMENTAR BASE DE DATOS DISEÑADA SOBRE MSSQL | 2d | 2018-11-09 | 2018-11-13 | 25 | 0.12d | 0d | Profesional Desarrollador; Gestor de proyecto [50%] | 20h | 625,000 |

| ID | WBS | Task | Type | Duration | Start | Finish | Predecessors | Total slack | Resources | Work | Cost |
| --- | --- | --- | --- | --- | --- | --- | --- | --- | --- | --- | --- |
| 27 | 1.3.2 | **CONSOLIDAR LOS PRESUPUESTOS EN EXCEL SOBRE UNA BASE DE DATOS RELACIONAL** |  | 17.38d | 2018-11-13 | 2018-12-06 | 11 | 0d |  | 220h | 4,367,463.36 |
| 28 | 1.3.2.1 | CREAR SOFTWARE PARA IMPORTAR ARCHIVOS EXCEL DE PRESUPUESTOS SOBRE BASE DE DATOS |  | 6d | 2018-11-13 | 2018-11-20 | 26 | 0d | Aprendiz; Profesional Desarrollador; Gestor de proyecto | 80h | 2,141,780.48 |
| 29 | 1.3.2.2 | EJECUTAR SOFTWARE PARA IMPORTAR ARCHIVOS EXCEL DE PRESUPUESTOS SOBRE BASE DE DATOS |  | 12.5d | 2018-11-20 | 2018-12-06 | 28 | 0d | Aprendiz; Profesional Desarrollador; Gestor de proyecto | 140h | 2,225,682.88 |
| 30 | 1.3.3 | CONSOLIDAR INFORMACIÓN DE LISTAS DE PRECIOS DESDE |  | 25.5d | 2018-12-06 | 2019-01-09 | 29 | 0d | Aprendiz; Profesional Analítica; Gestor de proyecto [50%] | 260h | 3,826,365.76 |
| 31 | 1.3.4 | CONSOLIDAR INFORMACIÓN DE PRECIOS DE OBRAS |  | 25.5d | 2019-01-09 | 2019-02-12 | 30 | 0d | Aprendiz; Profesional Analítica; Gestor de proyecto [50%] | 260h | 3,826,365.76 |
| 32 | 1.3.5 | **CONSOLIDAR BASES DE DATOS DEL SOFTWARE DE CONTROL DE PRESUPUESTOS SOBRE UNA BASE DE DATOS ÚNICA** |  | 11.25d? | 2019-02-12 | 2019-02-28 | 23, 31 | 0d |  | 140h | 3,300,341.44 |
| 33 | 1.3.5.1 | CREAR SOFTWARE (PROGRAMA SIMPLE) PARA UNIFICAR BASES DE DATOS |  | 6d? | 2019-02-12 | 2019-02-20 | 31 | 0d | Profesional Desarrollador; Gestor de proyecto | 60h | 1,875,000 |
| 34 | 1.3.5.2 | EJECUTAR SOFTWARE PARA UNIFICAR BASES DE DATOS |  | 6.25d? | 2019-02-20 | 2019-02-28 | 33 | 0d | Aprendiz; Profesional Desarrollador; Gestor de proyecto | 80h | 1,425,341.44 |
| 35 | 1.3.6 | REGISTRAR INFORMACIÓN DE FUENTES EXÓGENAS SOBRE BASE DE DATOS PARA CONSOLIDACIÓN |  | 5.25d? | 2019-02-28 | 2019-03-13 | 32 | 136.75d | Aprendiz; Gestor de proyecto [50%]; Profesional Analítica | 50h | 756,506.08 |
| 36 | 1.3.7 | **VALIDAR Y DEPURAR INFORMACIÓN** |  | 9.12d | 2019-02-28 | 2019-03-13 | 13, 32 | 0d |  | 205h | 5,600,256.08 |
| 37 | 1.3.7.1 | DEFINIR REGLAS DE VALIDACIÓN DE INFORMACIÓN Y MÉTRICAS DE CALIDAD |  | 2d | 2019-02-28 | 2019-03-01 | 14 | 0d | Profesional Analítica; Gestor de proyecto [50%]; Profesional Desarrollador | 40h | 1,250,000 |
| 38 | 1.3.7.2 | APLICAR REGLAS DE VALIDACIÓN PARA DEPURAR INFORMACIÓ INVALIDA |  | 6.25d | 2019-03-04 | 2019-03-11 | 18, 37 | 0d | Profesional Analítica; Gestor de proyecto [50%]; Profesional Desarrollador; Aprendiz | 125h | 3,100,256.08 |
| 39 | 1.3.7.3 | CALCULAR MÉTRICAS DE CALIDAD PARA ESTABLECER CONFIABILIDAD DE LA INFORMACIÓN |  | 2d | 2019-03-11 | 2019-03-13 | 19, 38 | 0d | Profesional Analítica; Gestor de proyecto [50%]; Profesional Desarrollador | 40h | 1,250,000 |
| 40 | 1.4 | **REALIZAR ANÁLISIS DE INFORMACIÓN** |  | 45.75d? | 2019-03-13 | 2019-05-16 | 36 | 0d |  | 515h | 16,093,750 |
| 41 | 1.4.1 | **DISEÑAR E IMPLEMENTAR METODOLOGÍAS DE ANÁLISIS DE IMPACTO DE VARIABLES EN PRECIOS (COMPONENTES PRINCIPALES, PRUEBAS DE HIPÓTESIS, ANÁLISIS DE CORRELACIÓN, ETC)** |  | 16.5d | 2019-03-13 | 2019-04-04 | 39 | 0d |  | 185h | 5,781,250 |
| 42 | 1.4.1.1 | DEFINIR Y DISEÑAR (EN CASO DE SER NECESARIO) MODELOS MATEMÁTICOS Y ALGORITMOS A IMPLEMENTAR - IMPACTOS |  | 2d | 2019-03-13 | 2019-03-15 | 39 | 0d | Gestor de proyecto; Profesional Analítica | 20h | 625,000 |
| 43 | 1.4.1.2 | IMPLEMENTAR SCRIPTS EN R PARA ANÁLISIS DE IMPACTO DE VARIABLES |  | 6d | 2019-03-15 | 2019-03-22 | 42 | 0d | Gestor de proyecto; Profesional Analítica | 60h | 1,875,000 |
| 44 | 1.4.1.3 | REALIZAR EJECUCIONES DE LOS SCRIPTS DE R PARA ANÁLISIS DE IMPACTO |  | 6d | 2019-03-22 | 2019-03-29 | 43 | 0d | Gestor de proyecto; Profesional Analítica | 60h | 1,875,000 |
| 45 | 1.4.1.4 | IMPLEMENTAR INTERFAZ DE EJECUCIÓN Y REPORTEO SOBRE POWER BI O LA PLATAFORMA DE REPORTEO DEFINIDA |  | 4.5d | 2019-03-29 | 2019-04-04 | 44 | 0d | Gestor de proyecto; Profesional Analítica; Profesional Desarrollador | 45h | 1,406,250 |
| 46 | 1.4.2 | **DISEÑAR E IMPLEMENTAR METODOLOGÍAS DE ANÁLISIS DE CLUSTERING O AGRUPAMIENTO DE ITEMS PRESUPUESTALES (K-MEANS, PROGRAMACIÓN MATEMÁTICA, SVM,…,)** |  | 14.62d? | 2019-04-04 | 2019-04-25 | 45 | 0d |  | 165h | 5,156,250 |
| 47 | 1.4.2.1 | DEFINIR Y DISEÑAR (EN CASO DE SER NECESARIO) MODELOS MATEMÁTICOS Y ALGORITMOS A IMPLEMENTAR - AGRUPAMIENTO | milestone | 0d? | 2019-04-04 | 2019-04-04 | 45 | 0d | Gestor de proyecto; Profesional Desarrollador |  |  |
| 48 | 1.4.2.2 | IMPLEMENTAR SCRIPTS EN R - AGRUPAMIENTO |  | 6d? | 2019-04-04 | 2019-04-12 | 47 | 0d | Gestor de proyecto; Profesional Analítica | 60h | 1,875,000 |
| 49 | 1.4.2.3 | REALIZAR EJECUCIONES DE LOS SCRIPTS DE R - AGRUPAMIENTO |  | 6d | 2019-04-12 | 2019-04-19 | 48 | 0d | Gestor de proyecto; Profesional Analítica | 60h | 1,875,000 |
| 50 | 1.4.2.4 | IMPLEMENTAR INTERFAZ DE EJECUCIÓN Y REPORTEO SOBRE POWER BI O LA PLATAFORMA DE REPORTEO DEFINIDA - AGRUPAMIENTO |  | 4.5d | 2019-04-19 | 2019-04-25 | 49 | 0d | Gestor de proyecto; Profesional Desarrollador; Profesional Analítica | 45h | 1,406,250 |

| ID | WBS | Task | Type | Duration | Start | Finish | Predecessors | Total slack | Resources | Work | Cost |
| --- | --- | --- | --- | --- | --- | --- | --- | --- | --- | --- | --- |
| 51 | 1.4.3 | **DISEÑAR E IMPLEMENTAR METODOLOGÍAS DE PROYECCIÓN O PRONOSTICOS DE PRECIOS (REGRESIONES MULTIVARIADAS, REDES NEURANALES, ARBOLES DE REGRESIÓN,…,)** |  | 14.62d? | 2019-04-25 | 2019-05-16 | 45 | 0d |  | 165h | 5,156,250 |
| 52 | 1.4.3.1 | DEFINIR Y DISEÑAR (EN CASO DE SER NECESARIO) MODELOS MATEMÁTICOS Y ALGORITMOS A IMPLEMENTAR - PROYECCIÓN | milestone | 0d? | 2019-04-25 | 2019-04-25 | 50 | 0d | Gestor de proyecto; Profesional Desarrollador |  |  |
| 53 | 1.4.3.2 | IMPLEMENTAR SCRIPTS EN R - PROYECCIÓN |  | 6d? | 2019-04-25 | 2019-05-02 | 52 | 0d | Gestor de proyecto; Profesional Analítica | 60h | 1,875,000 |
| 54 | 1.4.3.3 | REALIZAR EJECUCIONES DE LOS SCRIPTS DE R - PROYECCIÓN |  | 6d? | 2019-05-02 | 2019-05-10 | 53 | 0d | Gestor de proyecto; Profesional Analítica | 60h | 1,875,000 |
| 55 | 1.4.3.4 | IMPLEMENTAR INTERFAZ DE EJECUCIÓN Y REPORTEO SOBRE POWER BI O LA PLATAFORMA DE REPORTEO DEFINIDA - PROYECCIÓN |  | 4.5d? | 2019-05-10 | 2019-05-16 | 54 | 0d | Gestor de proyecto; Profesional Desarrollador; Profesional Analítica | 45h | 1,406,250 |
| 56 | 1.5 | PRESENTAR Y DOCUMENTAR RESULTADOS |  | 5.25d | 2019-05-16 | 2019-06-03 | 55 | 78.12d | Gestor de proyecto [50%]; Profesional Analítica; Profesional Desarrollador | 60h | 1,875,000 |
| 57 | 2 | **FASE 2 - DISEÑAR E IMPLEMENTAR METODOLOGÍA PARA MONITOREO PERMAMENTE A PRECIOS DE INSUMOS** |  | 78.88d? | 2019-05-16 | 2019-09-03 | 51 | 0d |  | 1147.5h | 35,322,045.72 |
| 58 | 2.1 | **DISEÑAR METODOLOGÍA Y HERRAMIENTAS PARA EL MONITOREO PERMANENTE A PRECIOS** |  | 43.5d? | 2019-05-16 | 2019-07-16 | 55 | 0d |  | 682.5h | 21,328,125 |
| 59 | 2.1.1 | DEFINIR METODOLOGÍA DE ARTICULACIÓN CON CONTROL DE PRESUPUESTOS O PROYECTOS |  | 3d? | 2019-05-16 | 2019-05-20 | 55 | 0d | Gestor de proyecto [50%]; Profesional Analítica; Profesional Desarrollador | 50h | 1,562,500 |
| 60 | 2.1.2 | DEFINIR METODOLOGÍA DE ARTICULACIÓN CON PRESUPUESTOS |  | 3d? | 2019-05-20 | 2019-05-23 | 59 | 0d | Gestor de proyecto [50%]; Profesional Analítica; Profesional Desarrollador | 50h | 1,562,500 |
| 61 | 2.1.3 | DEFINIR HERRAMIENTAS PARA EL REGISTRO DE NUEVOS PRECIOS UNITARIOS EN LA BASE DE DATOS |  | 3d? | 2019-05-23 | 2019-05-28 | 60 | 0d | Gestor de proyecto [50%]; Profesional Analítica; Profesional Desarrollador | 50h | 1,562,500 |
| 62 | 2.1.4 | **DISEÑAR HERRAMIENTA PARA REGISTRO Y MONITOREO A PRECIOS** |  | 33.75d? | 2019-05-28 | 2019-07-12 | 61 | 0d |  | 500h | 15,625,000 |
| 63 | 2.1.4.1 | **ESTABLECER REQUERIMIENTOS DE USUARIO** |  | 4.12d | 2019-05-28 | 2019-06-03 | 61 | 0d |  | 90h | 2,812,500 |
| 64 | 2.1.4.1.1 | REALIZAR DIAGRAMAS DE ALTO NIVEL CON ENTENDIMIENTO DEL PROBLEMA |  | 2d | 2019-05-28 | 2019-05-29 | 61 | 0d | Gestor de proyecto [50%]; Profesional Analítica; Profesional Desarrollador | 40h | 1,250,000 |
| 65 | 2.1.4.1.2 | DOCUMENTAR LOS REQUERIMIENTOS DE USUARIO |  | 1.5d | 2019-05-29 | 2019-05-31 | 64 | 0d | Gestor de proyecto [50%]; Profesional Analítica; Profesional Desarrollador | 30h | 937,500 |
| 66 | 2.1.4.1.3 | VALIDAR Y AJUSTAR REQUERIMIENTOS DE USUARIO |  | 1.12d | 2019-05-31 | 2019-06-03 | 65 | 0d | Gestor de proyecto [50%]; Profesional Analítica; Profesional Desarrollador | 20h | 625,000 |
| 67 | 2.1.4.2 | **DEFINIR ARQUITECTURA COMPUTACIONAL** |  | 29.62d? | 2019-06-03 | 2019-07-12 | 66 | 0d |  | 410h | 12,812,500 |
| 68 | 2.1.4.2.1 | **DEFINIR COMPONENTES DE HARDWARE NECESARIOS** |  | 3d? | 2019-06-03 | 2019-06-06 | 66 | 0d |  | 35h | 1,093,750 |
| 69 | 2.1.4.2.1.1 | ESTABLECER NECESIDADES DE PROCESAMIENTO (PROCESADORES Y RAM) |  | 1.12d? | 2019-06-03 | 2019-06-04 | 66 | 0d | Gestor de proyecto [50%]; Profesional Analítica; Profesional Desarrollador | 15h | 468,750 |
| 70 | 2.1.4.2.1.2 | ESTABLECER NECESIDADES DE ALMACENAJE |  | 1.12d? | 2019-06-04 | 2019-06-05 | 69 | 0d | Gestor de proyecto [50%]; Profesional Analítica; Profesional Desarrollador | 10h | 312,500 |
| 71 | 2.1.4.2.1.3 | ESTABLECER NECESIDADES DE CONECTIVIDAD |  | 1.12d? | 2019-06-05 | 2019-06-06 | 70 | 0d | Gestor de proyecto [50%]; Profesional Analítica; Profesional Desarrollador | 10h | 312,500 |
| 72 | 2.1.4.2.2 | **DEFINIR COMPONENTES DE SOFTWARE NECESARIOS** |  | 6.62d? | 2019-06-06 | 2019-06-14 | 71 | 0d |  | 70h | 2,187,500 |
| 73 | 2.1.4.2.2.1 | DEFINIR SISTEMA OPERATIVO |  | 1.12d? | 2019-06-06 | 2019-06-07 | 71 | 0d | Gestor de proyecto [50%]; Profesional Analítica; Profesional Desarrollador | 10h | 312,500 |
| 74 | 2.1.4.2.2.2 | DEFINIR MOTOR DE BASES DE DATOS |  | 1.12d? | 2019-06-07 | 2019-06-10 | 73 | 0d | Gestor de proyecto [50%]; Profesional Analítica; Profesional Desarrollador | 10h | 312,500 |
| 75 | 2.1.4.2.2.3 | DEFINIR LENGUAJES DE PROGRAMACIÓN |  | 1.12d? | 2019-06-10 | 2019-06-11 | 74 | 0d | Gestor de proyecto [50%]; Profesional Analítica; Profesional Desarrollador | 10h | 312,500 |
| 76 | 2.1.4.2.2.4 | DEFINIR LIBRERÍAS DE TERCEROS |  | 2d? | 2019-06-11 | 2019-06-12 | 75 | 0d | Gestor de proyecto [50%]; Profesional Analítica; Profesional Desarrollador | 20h | 625,000 |
| 77 | 2.1.4.2.2.5 | DEFINIR SOFTWARE DE TERCEROS |  | 2d? | 2019-06-12 | 2019-06-14 | 76 | 0d | Gestor de proyecto [50%]; Profesional Analítica; Profesional Desarrollador | 20h | 625,000 |

| ID | WBS | Task | Duration | Start | Finish | Predecessors | Total slack | Resources | Work | Cost |
| --- | --- | --- | --- | --- | --- | --- | --- | --- | --- | --- |
| 78 | 2.1.4.2.3 | **DISEÑAR MODELO DE DATOS** | 5.75d? | 2019-06-14 | 2019-06-24 | 72 | 0d |  | 105h | 3,281,250 |
| 79 | 2.1.4.2.3.1 | REALIZAR MODELO ENTIDAD RELACIÓN | 4.5d? | 2019-06-14 | 2019-06-20 | 72 | 0d | Gestor de proyecto [50%]; Profesional Analítica; Profesional Desarrollador | 65h | 2,031,250 |
| 80 | 2.1.4.2.3.2 | REALIZAR DOCUMENTO CON DICCIONARIO DE DATOS | 2d? | 2019-06-20 | 2019-06-24 | 79 | 0d | Gestor de proyecto [50%]; Profesional Analítica; Profesional Desarrollador | 40h | 1,250,000 |
| 81 | 2.1.4.2.4 | **DISEÑAR INTERFAZ** | 8d? | 2019-06-24 | 2019-07-04 |  | 0d |  | 120h | 3,750,000 |
| 82 | 2.1.4.2.4.1 | REALIZAR FLUJOS DE USO DE USUARIO FINAL | 4.5d? | 2019-06-24 | 2019-06-28 | 78 | 0d | Gestor de proyecto [50%]; Profesional Analítica; Profesional Desarrollador | 65h | 2,031,250 |
| 83 | 2.1.4.2.4.2 | REALIZAR WIREFRAME | 4.5d? | 2019-06-28 | 2019-07-04 | 82 | 0d | Gestor de proyecto [50%]; Profesional Analítica; Profesional Desarrollador | 55h | 1,718,750 |
| 84 | 2.1.4.2.5 | **DISEÑO CODIFICACIÓN** | 6.25d? | 2019-07-04 | 2019-07-12 |  | 0d |  | 80h | 2,500,000 |
| 85 | 2.1.4.2.5.1 | REALIZAR DOCUMENTO DE DEFINICIÓN DETALLADA CON MÉTODOS, CLASES, VISTAS, CONTROLADORES Y UTILIDADES | 6d? | 2019-07-04 | 2019-07-11 | 83 | 0d | Gestor de proyecto [50%]; Profesional Analítica; Profesional Desarrollador | 70h | 2,187,500 |
| 86 | 2.1.4.2.5.2 | REALIZAR CRONOGRAMA DE IMPLEMENTACIÓN | 1d | 2019-07-11 | 2019-07-12 | 85 | 0d | Gestor de proyecto [50%]; Profesional Analítica; Profesional Desarrollador | 10h | 312,500 |
| 87 | 2.1.5 | DISEÑAR PROCESOS DE NEGOCIOS PARA MONITOREO | 2d | 2019-07-12 | 2019-07-16 | 86 | 0d | Gestor de proyecto [50%]; Profesional Analítica | 20h | 625,000 |
| 88 | 2.1.6 | **DISEÑO DE PRUEBAS** | 0.38d? | 2019-07-12 | 2019-07-15 | 62 | 1.25d |  | 12.5h | 390,625 |
| 89 | 2.1.6.1 | ESTABLECER PRUEBAS A REALIZAR | 0.5d | 2019-07-12 | 2019-07-15 |  | 1.25d | Gestor de proyecto [50%]; Profesional Analítica; Profesional Desarrollador | 7.5h | 234,375 |
| 90 | 2.1.6.2 | REALIZAR CONOGRAMA DE PRUEBAS | 0.5d? | 2019-07-12 | 2019-07-15 |  | 1.25d | Gestor de proyecto [50%]; Profesional Analítica; Profesional Desarrollador | 5h | 156,250 |
| 91 | 2.2 | **IMPLEMENTAR METODOLOGÍA Y HERRAMIENTAS PARA EL MONITOREO A PRECIOS** | 35.38d? | 2019-07-16 | 2019-09-03 | 58 | 0d |  | 465h | 13,993,920.72 |
| 92 | 2.2.1 | EJECUTAR CRONOGRAMA DE IMPLEMENTACIÓN | 24.5d? | 2019-07-16 | 2019-08-15 | 90 | 0d | Gestor de proyecto [50%]; Profesional Analítica; Profesional Desarrollador | 265h | 8,281,250 |
| 93 | 2.2.2 | EJECUTAR CRONOGRAMA DE PRUEBAS | 3.38d | 2019-08-15 | 2019-08-20 | 92 | 0d | Gestor de proyecto [50%]; Profesional Analítica; Profesional Desarrollador; Aprendiz | 60h | 1,337,670.72 |
| 94 | 2.2.3 | REALIZAR AJUSTES CON BASE EN RESULTADOS DE LAS PRUEBAS | 12d? | 2019-08-20 | 2019-09-03 | 93 | 0d | Gestor de proyecto [50%]; Profesional Analítica; Profesional Desarrollador | 140h | 4,375,000 |
| 95 | 3 | **CIERRE** | 12d | 2019-09-04 | 2019-09-19 | 57 | 0d |  | 225h | 7,031,250 |
| 96 | 3.1 | REALIZAR MANUALES DE USUARIO | 4.5d | 2019-09-04 | 2019-09-09 | 94 | 0d | Gestor de proyecto; Profesional Analítica; Profesional Desarrollador | 75h | 2,343,750 |
| 97 | 3.2 | REALIZAR CAPACITACIONES | 4.5d | 2019-09-10 | 2019-09-13 | 96 | 0d | Gestor de proyecto; Profesional Analítica; Profesional Desarrollador | 75h | 2,343,750 |
| 98 | 3.3 | REALIZAR DOCUMENTOS TECNICOS SOLUCIÓN FINAL | 4.5d | 2019-09-16 | 2019-09-19 | 97 | 0d | Gestor de proyecto; Profesional Analítica; Profesional Desarrollador | 75h | 2,343,750 |
